# Instalación Bahía Transformador 132/13.2 kV - Subestación Modelo

Schedule from MS Project XML, 2026-07-06 to 2026-11-20.
Pieza de portfolio - Postulación Proyectista, Núcleo Eléctrica Argentina S.A.

## Calendars

- Standard: Mon-Fri 08:00-12:00, 13:00-17:00; Sat-Sun off.

## Resources

| Resource |
| --- |
| Jefe de Proyecto |
| Proyectista |
| Capataz Obra Civil |
| Técnico Electromecánico |
| Técnico de Comisionamiento |

## Schedule

| ID | WBS | Task | Type | Duration | Start | Finish | Predecessors | Resources |
| --- | --- | --- | --- | --- | --- | --- | --- | --- |
| 1 | 1 | **INSTALACIÓN BAHÍA TRANSFORMADOR 132/13.2 kV** |  | 0d | 2026-07-06 | 2026-11-20 |  |  |
| 2 | 1.1 | **Ingeniería y Documentación** |  | 0d | 2026-07-06 | 2026-08-24 |  |  |
| 3 | 1.1.1 | Relevamiento y estudios previos |  | 5d | 2026-07-06 | 2026-07-10 |  | Proyectista |
| 4 | 1.1.2 | Diseño de ingeniería básica |  | 10d | 2026-07-13 | 2026-07-24 | 3 | Proyectista |
| 5 | 1.1.3 | Ingeniería de detalle (planos AutoCAD) |  | 15d | 2026-07-27 | 2026-08-14 | 4 | Proyectista |
| 6 | 1.1.4 | Aprobación de planos por cliente |  | 5d | 2026-08-17 | 2026-08-21 | 5 | Jefe de Proyecto |
| 7 | 1.1.5 | HITO: Ingeniería aprobada | milestone | 0d | 2026-08-24 | 2026-08-24 | 6 |  |
| 8 | 1.2 | **Procura** |  | 0d | 2026-07-27 | 2026-10-23 |  |  |
| 9 | 1.2.1 | Especificación técnica de equipos |  | 5d | 2026-07-27 | 2026-07-31 | 4 | Proyectista |
| 10 | 1.2.2 | Compra transformador de potencia |  | 60d | 2026-08-03 | 2026-10-23 | 9 | Jefe de Proyecto |
| 11 | 1.2.3 | Compra interruptores y seccionadores |  | 45d | 2026-08-03 | 2026-10-02 | 9 | Jefe de Proyecto |
| 12 | 1.2.4 | Compra materiales PAT y canalizaciones |  | 15d | 2026-08-03 | 2026-08-21 | 9 | Jefe de Proyecto |
| 13 | 1.3 | **Obra Civil** |  | 0d | 2026-08-24 | 2026-09-23 |  |  |
| 14 | 1.3.1 | Replanteo y cerco de obra |  | 3d | 2026-08-24 | 2026-08-26 | 7 | Capataz Obra Civil |
| 15 | 1.3.2 | Excavación malla de puesta a tierra |  | 5d | 2026-08-27 | 2026-09-02 | 14 | Capataz Obra Civil |
| 16 | 1.3.3 | Tendido de malla de tierra y jabalinas |  | 8d | 2026-09-03 | 2026-09-14 | 15 | Capataz Obra Civil |
| 17 | 1.3.4 | Excavación y armado de trincheras |  | 10d | 2026-08-27 | 2026-09-09 | 14 | Capataz Obra Civil |
| 18 | 1.3.5 | Fundaciones de equipos y estructuras |  | 15d | 2026-08-27 | 2026-09-16 | 14 | Capataz Obra Civil |
| 19 | 1.3.6 | Foso de contención de aceite |  | 5d | 2026-09-17 | 2026-09-23 | 18 | Capataz Obra Civil |
| 20 | 1.3.7 | Obra civil sala de control |  | 20d | 2026-08-27 | 2026-09-23 | 14 | Capataz Obra Civil |
| 21 | 1.4 | **Montaje Electromecánico** |  | 0d | 2026-09-10 | 2026-10-30 |  |  |
| 22 | 1.4.1 | Montaje de estructuras y pórticos |  | 10d | 2026-09-17 | 2026-09-30 | 18 | Técnico Electromecánico |
| 23 | 1.4.2 | Montaje transformador de potencia |  | 5d | 2026-10-26 | 2026-10-30 | 10, 19 | Técnico Electromecánico |
| 24 | 1.4.3 | Montaje interruptores y seccionadores |  | 8d | 2026-10-05 | 2026-10-14 | 11, 22 | Técnico Electromecánico |
| 25 | 1.4.4 | Montaje de barra colectora |  | 5d | 2026-10-01 | 2026-10-07 | 22 | Técnico Electromecánico |
| 26 | 1.4.5 | Tendido de cables de control y potencia |  | 10d | 2026-09-10 | 2026-09-23 | 12, 17 | Técnico Electromecánico |
| 27 | 1.4.6 | Conexionado y cableado de protecciones |  | 8d | 2026-09-24 | 2026-10-05 | 26 | Técnico Electromecánico |

| ID | WBS | Task | Type | Duration | Start | Finish | Predecessors | Resources |
| --- | --- | --- | --- | --- | --- | --- | --- | --- |
| 28 | 1.5 | **Puesta en Servicio** |  | 0d | 2026-09-15 | 2026-11-20 |  |  |
| 29 | 1.5.1 | Ensayos de puesta a tierra (resistencia) |  | 2d | 2026-09-15 | 2026-09-16 | 16 | Técnico de Comisionamiento |
| 30 | 1.5.2 | Ensayos eléctricos en frío (megado, TT/TC) |  | 5d | 2026-11-02 | 2026-11-06 | 27, 23, 24, 25 | Técnico de Comisionamiento |
| 31 | 1.5.3 | Pruebas funcionales de protecciones |  | 5d | 2026-11-09 | 2026-11-13 | 30 | Técnico de Comisionamiento |
| 32 | 1.5.4 | Energización y pruebas en caliente |  | 3d | 2026-11-16 | 2026-11-18 | 31, 29 | Jefe de Proyecto |
| 33 | 1.5.5 | Acta de recepción y cierre |  | 1d | 2026-11-19 | 2026-11-19 | 32 | Jefe de Proyecto |
| 34 | 1.5.6 | HITO: Puesta en Servicio | milestone | 0d | 2026-11-20 | 2026-11-20 | 33 |  |
