# Instalación Bahía Transformador 132/13.2 kV - Subestación Modelo

Schedule from MS Project XML, 2026-07-06 to 2026-11-20.
Pieza de portfolio - Postulación Proyectista, Núcleo Eléctrica Argentina S.A.

## Calendars

- Standard: Mon-Fri 08:00-12:00, 13:00-17:00; Sat-Sun off.

## Resources

| Resource | Group |
| --- | --- |
| Jefe de Proyecto | Dirección |
| Proyectista | Ingeniería |
| Capataz Obra Civil | Obra Civil |
| Técnico Electromecánico | Montaje |
| Técnico de Comisionamiento | Puesta en Servicio |

## Schedule

| ID | WBS | Task | Type | Duration | Start | Finish | Predecessors | Baseline start | Baseline finish | Baseline duration | Resources | Work |
| --- | --- | --- | --- | --- | --- | --- | --- | --- | --- | --- | --- | --- |
| 1 | 1 | **INSTALACIÓN BAHÍA TRANSFORMADOR 132/13.2 kV** |  | 0d | 2026-07-06 | 2026-11-20 |  | 2026-07-06 | 2026-11-20 |  |  |  |
| 2 | 1.1 | **Ingeniería y Documentación** |  | 0d | 2026-07-06 | 2026-08-24 |  | 2026-07-06 | 2026-08-24 |  |  |  |
| 3 | 1.1.1 | Relevamiento y estudios previos |  | 5d | 2026-07-06 | 2026-07-10 |  | 2026-07-06 | 2026-07-10 | 5d | Proyectista | 40h |
| 4 | 1.1.2 | Diseño de ingeniería básica |  | 10d | 2026-07-13 | 2026-07-24 | 3 | 2026-07-13 | 2026-07-24 | 10d | Proyectista | 80h |
| 5 | 1.1.3 | Ingeniería de detalle (planos AutoCAD) |  | 15d | 2026-07-27 | 2026-08-14 | 4 | 2026-07-27 | 2026-08-14 | 15d | Proyectista | 120h |
| 6 | 1.1.4 | Aprobación de planos por cliente |  | 5d | 2026-08-17 | 2026-08-21 | 5 | 2026-08-17 | 2026-08-21 | 5d | Jefe de Proyecto | 40h |
| 7 | 1.1.5 | HITO: Ingeniería aprobada | milestone | 0d | 2026-08-24 | 2026-08-24 | 6 | 2026-08-24 | 2026-08-24 |  |  |  |
| 8 | 1.2 | **Procura** |  | 0d | 2026-07-27 | 2026-10-23 |  | 2026-07-27 | 2026-10-23 |  |  |  |
| 9 | 1.2.1 | Especificación técnica de equipos |  | 5d | 2026-07-27 | 2026-07-31 | 4 | 2026-07-27 | 2026-07-31 | 5d | Proyectista | 40h |
| 10 | 1.2.2 | Compra transformador de potencia |  | 60d | 2026-08-03 | 2026-10-23 | 9 | 2026-08-03 | 2026-10-23 | 60d | Jefe de Proyecto | 480h |
| 11 | 1.2.3 | Compra interruptores y seccionadores |  | 45d | 2026-08-03 | 2026-10-02 | 9 | 2026-08-03 | 2026-10-02 | 45d | Jefe de Proyecto | 360h |
| 12 | 1.2.4 | Compra materiales PAT y canalizaciones |  | 15d | 2026-08-03 | 2026-08-21 | 9 | 2026-08-03 | 2026-08-21 | 15d | Jefe de Proyecto | 120h |
| 13 | 1.3 | **Obra Civil** |  | 0d | 2026-08-24 | 2026-09-23 |  | 2026-08-24 | 2026-09-23 |  |  |  |
| 14 | 1.3.1 | Replanteo y cerco de obra |  | 3d | 2026-08-24 | 2026-08-26 | 7 | 2026-08-24 | 2026-08-26 | 3d | Capataz Obra Civil | 24h |
| 15 | 1.3.2 | Excavación malla de puesta a tierra |  | 5d | 2026-08-27 | 2026-09-02 | 14 | 2026-08-27 | 2026-09-02 | 5d | Capataz Obra Civil | 40h |
| 16 | 1.3.3 | Tendido de malla de tierra y jabalinas |  | 8d | 2026-09-03 | 2026-09-14 | 15 | 2026-09-03 | 2026-09-14 | 8d | Capataz Obra Civil | 64h |
| 17 | 1.3.4 | Excavación y armado de trincheras |  | 10d | 2026-08-27 | 2026-09-09 | 14 | 2026-08-27 | 2026-09-09 | 10d | Capataz Obra Civil | 80h |
| 18 | 1.3.5 | Fundaciones de equipos y estructuras |  | 15d | 2026-08-27 | 2026-09-16 | 14 | 2026-08-27 | 2026-09-16 | 15d | Capataz Obra Civil | 120h |
| 19 | 1.3.6 | Foso de contención de aceite |  | 5d | 2026-09-17 | 2026-09-23 | 18 | 2026-09-17 | 2026-09-23 | 5d | Capataz Obra Civil | 40h |
| 20 | 1.3.7 | Obra civil sala de control |  | 20d | 2026-08-27 | 2026-09-23 | 14 | 2026-08-27 | 2026-09-23 | 20d | Capataz Obra Civil | 160h |
| 21 | 1.4 | **Montaje Electromecánico** |  | 0d | 2026-09-10 | 2026-10-30 |  | 2026-09-10 | 2026-10-30 |  |  |  |
| 22 | 1.4.1 | Montaje de estructuras y pórticos |  | 10d | 2026-09-17 | 2026-09-30 | 18 | 2026-09-17 | 2026-09-30 | 10d | Técnico Electromecánico | 80h |
| 23 | 1.4.2 | Montaje transformador de potencia |  | 5d | 2026-10-26 | 2026-10-30 | 10, 19 | 2026-10-26 | 2026-10-30 | 5d | Técnico Electromecánico | 40h |
| 24 | 1.4.3 | Montaje interruptores y seccionadores |  | 8d | 2026-10-05 | 2026-10-14 | 11, 22 | 2026-10-05 | 2026-10-14 | 8d | Técnico Electromecánico | 64h |
| 25 | 1.4.4 | Montaje de barra colectora |  | 5d | 2026-10-01 | 2026-10-07 | 22 | 2026-10-01 | 2026-10-07 | 5d | Técnico Electromecánico | 40h |
| 26 | 1.4.5 | Tendido de cables de control y potencia |  | 10d | 2026-09-10 | 2026-09-23 | 12, 17 | 2026-09-10 | 2026-09-23 | 10d | Técnico Electromecánico | 80h |
| 27 | 1.4.6 | Conexionado y cableado de protecciones |  | 8d | 2026-09-24 | 2026-10-05 | 26 | 2026-09-24 | 2026-10-05 | 8d | Técnico Electromecánico | 64h |

| ID | WBS | Task | Type | Duration | Start | Finish | Predecessors | Baseline start | Baseline finish | Baseline duration | Resources | Work |
| --- | --- | --- | --- | --- | --- | --- | --- | --- | --- | --- | --- | --- |
| 28 | 1.5 | **Puesta en Servicio** |  | 0d | 2026-09-15 | 2026-11-20 |  | 2026-09-15 | 2026-11-20 |  |  |  |
| 29 | 1.5.1 | Ensayos de puesta a tierra (resistencia) |  | 2d | 2026-09-15 | 2026-09-16 | 16 | 2026-09-15 | 2026-09-16 | 2d | Técnico de Comisionamiento | 16h |
| 30 | 1.5.2 | Ensayos eléctricos en frío (megado, TT/TC) |  | 5d | 2026-11-02 | 2026-11-06 | 27, 23, 24, 25 | 2026-11-02 | 2026-11-06 | 5d | Técnico de Comisionamiento | 40h |
| 31 | 1.5.3 | Pruebas funcionales de protecciones |  | 5d | 2026-11-09 | 2026-11-13 | 30 | 2026-11-09 | 2026-11-13 | 5d | Técnico de Comisionamiento | 40h |
| 32 | 1.5.4 | Energización y pruebas en caliente |  | 3d | 2026-11-16 | 2026-11-18 | 31, 29 | 2026-11-16 | 2026-11-18 | 3d | Jefe de Proyecto | 24h |
| 33 | 1.5.5 | Acta de recepción y cierre |  | 1d | 2026-11-19 | 2026-11-19 | 32 | 2026-11-19 | 2026-11-19 | 1d | Jefe de Proyecto | 8h |
| 34 | 1.5.6 | HITO: Puesta en Servicio | milestone | 0d | 2026-11-20 | 2026-11-20 | 33 | 2026-11-20 | 2026-11-20 |  |  |  |
